# Plan de trabajo AFIRME Simulador de captación

Schedule from MS Project, 2016-04-26 to 2016-05-06.
Microsoft

## Calendars

- Estándar: Mon-Fri 09:00-13:00, 15:00-19:00; Sat-Sun off.

## Resources

| Resource |
| --- |
| Montserrat Glez |
| Daniela Nag |
| Saúl Glez |
| Montserrat Gonzalez |
| Daniela Najera |
| Saúl Gonzalez |
| Angel Gurrola |
| Ruben Rocha |
| MIguel del Hoyo |
| Saúl González |
| Montserrat González |

## Schedule

| ID | WBS | Task | Duration | Start | Finish | Predecessors | Total slack | Free slack | Resources | Work |
| --- | --- | --- | --- | --- | --- | --- | --- | --- | --- | --- |
| 1 | 1 | **Proyecto Simulador de Captacion** | 9d | 2016-04-26 | 2016-05-06 |  |  |  |  | 1088h |
| 2 | 1.1 | **Diseño de banner** | 4d | 2016-04-26 | 2016-04-29 |  | 5d |  | Montserrat González | 64h |
| 3 | 1.1.1 | Boceto del banner | 1d | 2016-04-26 | 2016-04-26 |  | 5d | 0d | Montserrat González | 8h |
| 4 | 1.1.2 | Recopilación y retoque de imágenes para el banner | 2d | 2016-04-27 | 2016-04-28 | 3 | 5d | 0d | Montserrat González | 16h |
| 5 | 1.1.3 | Integración y armado del banner | 1d | 2016-04-29 | 2016-04-29 | 4 | 5d |  | Montserrat González | 8h |
| 6 | 1.2 | **Diseño de interfaces** | 8d | 2016-04-26 | 2016-05-05 |  | 1d |  |  | 656h |
| 7 | 1.2.1 | **Front-end** | 3d | 2016-04-26 | 2016-04-28 |  | 1d |  | Angel Gurrola; Saúl González | 368h |
| 8 | 1.2.1.1 | **TDC** | 2d | 2016-04-26 | 2016-04-27 |  | 1d | 0d | Saúl González | 104h |
| 9 | 1.2.1.1.1 | Creacion de campos de captura | 1d | 2016-04-26 | 2016-04-26 |  | 2d | 1d | Saúl González | 8h |
| 10 | 1.2.1.1.2 | Demostracion del calculo de pagos a plazos | 1d | 2016-04-26 | 2016-04-26 |  | 2d | 1d | Saúl González | 8h |
| 11 | 1.2.1.1.3 | **Boton de tramite de TDC** | 1d | 2016-04-26 | 2016-04-26 |  | 1d | 0d | Saúl González | 24h |
| 12 | 1.2.1.1.3.1 | Crear boton de enlace | 1d | 2016-04-26 | 2016-04-26 |  | 1d |  | Saúl González | 8h |
| 13 | 1.2.1.1.3.2 | Crear Pop-ups de la documentacion para tramite de la tarjeta en sucursal | 1d | 2016-04-26 | 2016-04-26 |  | 1d |  | Saúl González | 8h |
| 14 | 1.2.1.1.4 | **Boton Legal** | 1d | 2016-04-27 | 2016-04-27 | 11 | 1d |  | Saúl González | 24h |
| 15 | 1.2.1.1.4.1 | Crear boton de enlace | 1d | 2016-04-27 | 2016-04-27 | 11 | 1d |  | Saúl González | 8h |
| 16 | 1.2.1.1.4.2 | Crear la informacion legal de la promocion | 1d | 2016-04-27 | 2016-04-27 | 11 | 1d |  | Saúl González | 8h |
| 17 | 1.2.1.1.5 | **Boton de enviar informacion** | 1d | 2016-04-27 | 2016-04-27 | 11 | 1d |  | Saúl González | 24h |
| 18 | 1.2.1.1.5.1 | Crear boton de enlace | 1d | 2016-04-27 | 2016-04-27 | 11 | 1d |  | Saúl González | 8h |
| 19 | 1.2.1.1.5.2 | Crear formulario para que el prospecto sea contactado | 1d | 2016-04-27 | 2016-04-27 | 11 | 1d |  | Saúl González | 8h |
| 20 | 1.2.1.2 | **Hipotecario** | 2d | 2016-04-26 | 2016-04-27 |  | 3d | 0d | Angel Gurrola | 112h |
| 21 | 1.2.1.2.1 | Creacion de campos de captura | 1d | 2016-04-26 | 2016-04-26 |  | 4d |  | Angel Gurrola | 8h |
| 22 | 1.2.1.2.2 | Creacion de campos a seleccionar (3) | 1d | 2016-04-26 | 2016-04-26 |  | 4d |  | Angel Gurrola | 8h |
| 23 | 1.2.1.2.3 | Demostracion del calculo de pagos a plazos | 1d | 2016-04-26 | 2016-04-26 |  | 3d | 0d | Angel Gurrola | 8h |
| 24 | 1.2.1.2.4 | **Boton de tramite de credito hipotecario** | 1d | 2016-04-27 | 2016-04-27 | 23 | 3d |  | Angel Gurrola | 24h |
| 25 | 1.2.1.2.4.1 | Crear boton de enlace | 1d | 2016-04-27 | 2016-04-27 | 23 | 3d |  | Angel Gurrola | 8h |
| 26 | 1.2.1.2.4.2 | Crear Pop-ups de la documentacion para tramite de la tarjeta en sucursal | 1d | 2016-04-27 | 2016-04-27 | 23 | 3d |  | Angel Gurrola | 8h |

| ID | WBS | Task | Duration | Start | Finish | Predecessors | Total slack | Free slack | Resources | Work |
| --- | --- | --- | --- | --- | --- | --- | --- | --- | --- | --- |
| 27 | 1.2.1.2.5 | **Boton Legal** | 1d | 2016-04-27 | 2016-04-27 | 23 | 3d |  | Angel Gurrola | 24h |
| 28 | 1.2.1.2.5.1 | Crear boton de enlace | 1d | 2016-04-27 | 2016-04-27 | 23 | 3d |  | Angel Gurrola | 8h |
| 29 | 1.2.1.2.5.2 | Crear la informacion legal de la promocion | 1d | 2016-04-27 | 2016-04-27 | 23 | 3d |  | Angel Gurrola | 8h |
| 30 | 1.2.1.2.6 | **Boton de enviar informacion** | 1d | 2016-04-27 | 2016-04-27 | 23 | 3d |  | Angel Gurrola | 24h |
| 31 | 1.2.1.2.6.1 | Crear boton de enlace | 1d | 2016-04-27 | 2016-04-27 | 23 | 3d |  | Angel Gurrola | 8h |
| 32 | 1.2.1.2.6.2 | Crear formulario para que el prospecto sea contactado | 1d | 2016-04-27 | 2016-04-27 | 23 | 3d |  | Angel Gurrola | 8h |
| 33 | 1.2.1.3 | **Nomina** | 1d | 2016-04-28 | 2016-04-28 | 8, 20 | 4d | 3d | Angel Gurrola; Saúl González | 104h |
| 34 | 1.2.1.3.1 | Creacion de campos de captura | 1d | 2016-04-28 | 2016-04-28 | 8, 20 | 4d |  | Saúl González | 8h |
| 35 | 1.2.1.3.2 | Demostracion del calculo de pagos a plazos | 1d | 2016-04-28 | 2016-04-28 | 8, 20 | 4d |  | Saúl González | 8h |
| 36 | 1.2.1.3.3 | **Boton de tramite de credito de nomina** | 1d | 2016-04-28 | 2016-04-28 | 8, 20 | 4d |  | Angel Gurrola | 24h |
| 37 | 1.2.1.3.3.1 | Crear boton de enlace | 1d | 2016-04-28 | 2016-04-28 | 8, 20 | 4d |  | Angel Gurrola | 8h |
| 38 | 1.2.1.3.3.2 | Crear Pop-ups de la documentacion para tramite de la tarjeta en sucursal | 1d | 2016-04-28 | 2016-04-28 | 8, 20 | 4d |  | Angel Gurrola | 8h |
| 39 | 1.2.1.3.4 | **Boton Legal** | 1d | 2016-04-28 | 2016-04-28 | 8, 20 | 4d |  | Saúl González | 24h |
| 40 | 1.2.1.3.4.1 | Crear boton de enlace | 1d | 2016-04-28 | 2016-04-28 | 8, 20 | 4d |  | Saúl González | 8h |
| 41 | 1.2.1.3.4.2 | Crear la informacion legal de la promocion | 1d | 2016-04-28 | 2016-04-28 | 8, 20 | 4d |  | Saúl González | 8h |
| 42 | 1.2.1.3.5 | **Boton de enviar informacion** | 1d | 2016-04-28 | 2016-04-28 | 8, 20 | 4d |  | Angel Gurrola | 24h |
| 43 | 1.2.1.3.5.1 | Crear boton de enlace | 1d | 2016-04-28 | 2016-04-28 | 8, 20 | 4d |  | Angel Gurrola | 8h |
| 44 | 1.2.1.3.5.2 | Crear formulario para que el prospecto sea contactado | 1d | 2016-04-28 | 2016-04-28 | 8, 20 | 4d |  | Angel Gurrola | 8h |
| 45 | 1.2.2 | **Back-end** | 6d | 2016-04-28 | 2016-05-05 |  | 1d |  | MIguel del Hoyo | 288h |
| 46 | 1.2.2.1 | **TDC** | 2d | 2016-04-28 | 2016-04-29 | 8 | 1d | 0d | MIguel del Hoyo | 80h |
| 47 | 1.2.2.1.1 | Realizacion de calculo de la oferta | 1d | 2016-04-28 | 2016-04-28 | 9 | 2d |  | MIguel del Hoyo | 8h |
| 48 | 1.2.2.1.2 | Demostracion del calculo de pagos a plazos | 1d | 2016-04-28 | 2016-04-28 | 10 | 2d |  | MIguel del Hoyo | 8h |
| 49 | 1.2.2.1.3 | **Boton de tramite de TDC** | 1d | 2016-04-28 | 2016-04-28 | 10 | 1d |  | MIguel del Hoyo | 16h |
| 50 | 1.2.2.1.3.1 | Mostrar Pop-ups de la documentacion para tramite de la tarjeta en sucursal | 1d | 2016-04-28 | 2016-04-28 | 10 | 1d | 0d | MIguel del Hoyo | 8h |

| ID | WBS | Task | Duration | Start | Finish | Predecessors | Total slack | Free slack | Resources | Work |
| --- | --- | --- | --- | --- | --- | --- | --- | --- | --- | --- |
| 51 | 1.2.2.1.4 | **Boton Legal** | 1d | 2016-04-29 | 2016-04-29 | 50 | 1d |  | MIguel del Hoyo | 16h |
| 52 | 1.2.2.1.4.1 | Mostrar la informacion legal de la promocion | 1d | 2016-04-29 | 2016-04-29 | 50 | 1d |  | MIguel del Hoyo | 8h |
| 53 | 1.2.2.1.5 | **Boton de enviar informacion** | 1d | 2016-04-29 | 2016-04-29 | 50 | 1d |  | MIguel del Hoyo | 16h |
| 54 | 1.2.2.1.5.1 | Mostrar formulario para que el prospecto sea contactado | 1d | 2016-04-29 | 2016-04-29 | 50 | 1d |  | MIguel del Hoyo | 8h |
| 55 | 1.2.2.2 | **Hipotecario** | 2d | 2016-05-02 | 2016-05-03 | 20, 46 | 1d | 0d | MIguel del Hoyo | 80h |
| 56 | 1.2.2.2.1 | Realizacion de calculo de la oferta | 1d | 2016-05-02 | 2016-05-02 |  | 2d |  | MIguel del Hoyo | 8h |
| 57 | 1.2.2.2.2 | Demostracion del calculo de pagos a plazos | 1d | 2016-05-02 | 2016-05-02 |  | 2d |  | MIguel del Hoyo | 8h |
| 58 | 1.2.2.2.3 | **Boton de tramite de credito hipotecario** | 1d | 2016-05-02 | 2016-05-02 |  | 1d |  | MIguel del Hoyo | 16h |
| 59 | 1.2.2.2.3.1 | Mostrar Pop-ups de la documentacion para tramite de la tarjeta en sucursal | 1d | 2016-05-02 | 2016-05-02 |  | 1d | 0d | MIguel del Hoyo | 8h |
| 60 | 1.2.2.2.4 | **Boton Legal** | 1d | 2016-05-03 | 2016-05-03 | 59 | 1d |  | MIguel del Hoyo | 16h |
| 61 | 1.2.2.2.4.1 | Mostrar la informacion legal de la promocion | 1d | 2016-05-03 | 2016-05-03 | 59 | 1d |  | MIguel del Hoyo | 8h |
| 62 | 1.2.2.2.5 | **Boton de enviar informacion** | 1d | 2016-05-03 | 2016-05-03 | 59 | 1d |  | MIguel del Hoyo | 16h |
| 63 | 1.2.2.2.5.1 | Mostrar formulario para que el prospecto sea contactado | 1d | 2016-05-03 | 2016-05-03 | 59 | 1d |  | MIguel del Hoyo | 8h |
| 64 | 1.2.2.3 | **Nomina** | 2d | 2016-05-04 | 2016-05-05 | 55, 33 | 1d |  | MIguel del Hoyo | 80h |
| 65 | 1.2.2.3.1 | Realizacion de calculo de la oferta | 1d | 2016-05-04 | 2016-05-04 |  | 2d |  | MIguel del Hoyo | 8h |
| 66 | 1.2.2.3.2 | Demostracion del calculo de pagos a plazos | 1d | 2016-05-04 | 2016-05-04 |  | 2d |  | MIguel del Hoyo | 8h |
| 67 | 1.2.2.3.3 | **Boton de tramite de credito de nomina** | 1d | 2016-05-04 | 2016-05-04 |  | 1d |  | MIguel del Hoyo | 16h |
| 68 | 1.2.2.3.3.1 | Mostrar Pop-ups de la documentacion para tramite de la tarjeta en sucursal | 1d | 2016-05-04 | 2016-05-04 |  | 1d | 0d | MIguel del Hoyo | 8h |
| 69 | 1.2.2.3.4 | **Boton Legal** | 1d | 2016-05-05 | 2016-05-05 | 68 | 1d |  | MIguel del Hoyo | 16h |
| 70 | 1.2.2.3.4.1 | Mostrar la informacion legal de la promocion | 1d | 2016-05-05 | 2016-05-05 | 68 | 1d |  | MIguel del Hoyo | 8h |
| 71 | 1.2.2.3.5 | **Boton de enviar informacion** | 1d | 2016-05-05 | 2016-05-05 | 68 | 1d |  | MIguel del Hoyo | 16h |
| 72 | 1.2.2.3.5.1 | Mostrar formulario para que el prospecto sea contactado | 1d | 2016-05-05 | 2016-05-05 | 68 | 1d |  | MIguel del Hoyo | 8h |
| 73 | 1.3 | Esquema de autorizacion | 1d | 2016-04-26 | 2016-04-26 |  | 8d |  |  |  |
| 74 | 1.4 | **Panel de Administración** | 9d | 2016-04-26 | 2016-05-06 |  | 0d |  |  | 368h |
| 75 | 1.4.1 | **Diseño de la interfaz del panel** | 9d | 2016-04-26 | 2016-05-06 |  | 0d |  |  | 368h |
| 76 | 1.4.1.1 | **Front-end** | 6d | 2016-04-26 | 2016-05-03 |  | 0d |  | Daniela Najera; Montserrat González; Angel Gurrola | 248h |
| 77 | 1.4.1.1.1 | Diseño del menu | 2d | 2016-04-26 | 2016-04-27 |  | 0d |  | Daniela Najera | 16h |
| 78 | 1.4.1.1.2 | Crear interfaz de inicio de sesión Login | 1d | 2016-04-26 | 2016-04-26 |  | 4d | 0d | Montserrat Glez | 8h |

Notes:
- 63: Pendiente para desglosarlo más
- 73: Pendiente
- 75: Pendiente de desglose

| ID | WBS | Task | Duration | Start | Finish | Predecessors | Total slack | Free slack | Constraint | Resources | Work |
| --- | --- | --- | --- | --- | --- | --- | --- | --- | --- | --- | --- |
| 79 | 1.4.1.1.3 | **Crear interfaz de usuarios** | 1d | 2016-04-27 | 2016-04-27 | 78 | 4d | 0d |  | Montserrat Glez | 32h |
| 80 | 1.4.1.1.3.1 | Altas | 1d | 2016-04-27 | 2016-04-27 | 78 | 6d |  |  | Montserrat Glez | 8h |
| 81 | 1.4.1.1.3.2 | Bajas | 1d | 2016-04-27 | 2016-04-27 | 78 | 6d |  |  | Montserrat Glez | 8h |
| 82 | 1.4.1.1.3.3 | Modificaciones | 1d | 2016-04-27 | 2016-04-27 | 78 | 4d | 0d |  | Montserrat Glez | 8h |
| 83 | 1.4.1.1.4 | Crear Interfaz de Activar/desactivar Banner | 1d | 2016-04-28 | 2016-04-28 | 77 | 0d |  |  | Daniela Najera | 8h |
| 84 | 1.4.1.1.5 | Crear interfaz de estadisticas y actividades del usuario | 3d | 2016-04-29 | 2016-05-03 | 83 | 0d |  |  | Daniela Najera | 24h |
| 85 | 1.4.1.1.6 | Crear botón con función de cerrar sesión | 1d | 2016-04-28 | 2016-04-28 | 82 | 4d | 0d |  | Montserrat Glez | 8h |
| 86 | 1.4.1.1.7 | Interfaz para administración de variables | 1d | 2016-04-29 | 2016-04-29 | 85 | 4d | 0d |  | Montserrat Glez | 8h |
| 87 | 1.4.1.2 | **Back-end** | 8d | 2016-04-27 | 2016-05-06 |  | 0d |  |  | Ruben Rocha | 120h |
| 88 | 1.4.1.2.1 | Validación del login | 1d | 2016-04-27 | 2016-04-27 | 78 | 7d |  | start no earlier than 2016-04-20 | Ruben Rocha | 8h |
| 89 | 1.4.1.2.2 | Administración de usuarios | 1d | 2016-04-28 | 2016-04-28 | 79 | 6d |  |  | Ruben Rocha | 8h |
| 90 | 1.4.1.2.3 | Control de banner activar/desactivar | 1d | 2016-04-29 | 2016-04-29 | 83 | 5d |  |  | Ruben Rocha | 8h |
| 91 | 1.4.1.2.4 | Control de estadisticas y actividades del usuario | 3d | 2016-05-04 | 2016-05-06 | 84 | 0d |  |  | Ruben Rocha | 24h |
| 92 | 1.4.1.2.5 | Administración de variables | 1d | 2016-05-02 | 2016-05-02 | 86 | 4d |  |  | Ruben Rocha | 8h |
